# 414_003_T02_PP_priloha_A_v1

Schedule from MS Project, 2021-03-01 to 2021-12-31, status date 2021-06-30, costs in Kč, A marks actual dates.

## Calendars

- Standardní: Mon-Fri 09:00-13:00, 14:00-18:00; Sat-Sun off.

## Resources

| Resource | Rate |
| --- | --- |
| Duňa Líbalová | 500 |
| Oldřich Jareš | 320 |
| Eliška Schaumannová | 500 |
| Renata Tůmová | 340 |
| Oliver Křížka | 350 |
| Ladislav Samek | 430 |
| Alena Radová | 500 |
| Daniel Prodělal | 400 |
| Josef Křupala | 400 |
| Pavla Šopíková | 400 |
| Ludmila Machová | 250 |
| Lucie Pelantová | 300 |
| Jiřina Černovská | 400 |
| Štěpán Mareška | 280 |
| Věra Voplakalová | 380 |
| Zbyněk Křivák | 380 |
| David Klesl | 400 |
| Karel Kostelenec | 400 |
| Vladimír Psohlavec | 500 |

## Schedule

| ID | WBS | Task | Duration | Start | Finish | Predecessors | Complete | Baseline start | Baseline finish | Baseline duration | Baseline 1 start | Baseline 1 finish | Resources | Work | Actual work | Cost | Baseline cost | Actual cost | Výstup (číslo) |
| --- | --- | --- | --- | --- | --- | --- | --- | --- | --- | --- | --- | --- | --- | --- | --- | --- | --- | --- | --- |
| 1 | A | **Návrh a testování webové aplikace** | 62.7d | 2021-03-01 A | 2021-05-26 A |  | 100% | 2021-03-01 | 2021-05-21 | 59.51d | 2021-03-01 | 2021-05-19 | Duňa Líbalová [50%] | 1272.3h | 1272.3h | 467,769.12 | 439,419.2 | 467,769.12 |  |
| 2 | 1.1.1.1 | Příprava konceptuální úrovně modelu | 3d | 2021-03-01 A | 2021-03-03 A |  | 100% | 2021-03-01 | 2021-03-03 | 3d | 2021-03-01 | 2021-03-03 | Ladislav Samek | 24h | 24h | 10,320 | 10,320 | 10,320 |  |
| 3 | 1.1.1.2 | Příprava technologické úrovně modelu | 4.1d | 2021-03-04 A | 2021-03-10 A | 2 | 100% | 2021-03-04 | 2021-03-08 | 3d | 2021-03-04 | 2021-03-08 | Ladislav Samek | 32.8h | 32.8h | 14,104 | 10,320 | 14,104 |  |
| 4 | 1.1.1.3 | Příprava implementační úrovně modelu | 4d | 2021-03-10 A | 2021-03-16 A | 3 | 100% | 2021-03-09 | 2021-03-12 | 4d | 2021-03-09 | 2021-03-12 | Karel Kostelenec [50%] | 16h | 16h | 6,400 | 6,400 | 6,400 | V1.1.1 |
| 5 | 1.1.2.1 | Vytvoření návrhů jednotného vizuálního stylu aplikace | 5.17d | 2021-03-01 A | 2021-03-08 A | 2SS | 100% | 2021-03-01 | 2021-03-08 | 5.17d | 2021-03-01 | 2021-03-05 | Štěpán Mareška | 41.36h | 41.36h | 11,580.8 | 11,580.8 | 11,580.8 |  |
| 6 | 1.1.2.2 | Výběr stylu a návrh vizualizace všech stránek aplikace | 3.32d | 2021-03-08 A | 2021-03-11 A | 5 | 100% | 2021-03-08 | 2021-03-11 | 3d | 2021-03-08 | 2021-03-10 | Štěpán Mareška | 26.56h | 26.56h | 7,436.8 | 6,720 | 7,436.8 | V1.1.2 |
| 7 | 1.1.3.1 | Vytvoření logiky celé aplikace | 11.02d | 2021-03-16 A | 2021-03-31 A | 4 | 100% | 2021-03-15 | 2021-03-26 | 10d | 2021-03-15 | 2021-03-26 | Karel Kostelenec [50%]; Renata Tůmová | 132.24h | 132.24h | 47,606.4 | 43,200 | 47,606.4 |  |
| 8 | 1.1.3.2 | Vytvoření databáze na základě datového modelu | 5.1d | 2021-03-31 A | 2021-04-07 A | 7 | 100% | 2021-03-29 | 2021-04-02 | 4.83d | 2021-03-29 | 2021-04-02 | Ladislav Samek | 40.8h | 40.8h | 17,544 | 16,615.2 | 17,544 |  |
| 9 | 1.1.3.3 | Napojení databáze na backend aplikace | 2.19d | 2021-04-07 A | 2021-04-09 A | 8 | 100% | 2021-04-02 | 2021-04-06 | 2d | 2021-04-05 | 2021-04-06 | Ladislav Samek; Renata Tůmová | 35.04h | 35.04h | 13,490.4 | 12,320 | 13,490.4 |  |
| 10 | 1.1.3.4 | Vytvoření administrátorské sekce aplikace | 4.37d | 2021-04-09 A | 2021-04-15 A | 9 | 100% | 2021-04-06 | 2021-04-12 | 4d | 2021-04-07 | 2021-04-12 | Karel Kostelenec [50%]; Renata Tůmová | 52.44h | 52.44h | 18,878.4 | 17,280 | 18,878.4 |  |
| 11 | 1.1.3.5 | Otestování programových kódů pomocí jednotkových testů | 3d | 2021-04-15 A | 2021-04-20 A | 10 | 100% | 2021-04-12 | 2021-04-15 | 3d | 2021-04-13 | 2021-04-15 | Karel Kostelenec [50%]; Renata Tůmová | 36h | 36h | 12,960 | 12,960 | 12,960 | V1.1.3 |
| 12 | 1.1.4.1 | Vytvoření HTML + CSS základu aplikace | 8.17d | 2021-03-11 A | 2021-03-23 A | 6 | 100% | 2021-03-11 | 2021-03-23 | 8.17d | 2021-03-11 | 2021-03-22 | Štěpán Mareška | 65.36h | 65.36h | 18,300.8 | 18,300.8 | 18,300.8 |  |
| 13 | 1.1.4.2 | Zavedení požadovaných uživatelských funkcionalit | 7.43d | 2021-03-23 A | 2021-04-02 A | 12 | 100% | 2021-03-23 | 2021-04-01 | 7d | 2021-03-23 | 2021-03-31 | Věra Voplakalová | 59.44h | 59.44h | 22,587.2 | 21,280 | 22,587.2 |  |
| 14 | 1.1.4.3 | Otestování a schválení grafického rozhraní aplikace | 10.33d | 2021-04-02 A | 2021-04-16 A | 13 | 100% | 2021-04-01 | 2021-04-15 | 10d | 2021-04-01 | 2021-04-14 | Jiřina Černovská [50%]; Ludmila Machová | 123.96h | 123.96h | 37,188 | 36,000 | 37,188 |  |
| 15 | 1.1.4.4 | Otestování a schválení zakomponovaných uživatelských funkcionalit | 4.56d | 2021-04-16 A | 2021-04-22 A | 14 | 100% | 2021-04-15 | 2021-04-21 | 4d | 2021-04-15 | 2021-04-20 | Jiřina Černovská [50%]; Ludmila Machová | 54.72h | 54.72h | 16,416 | 14,400 | 16,416 | V1.1.4 |
| 16 | 1.1.5.1 | Programové propojení frontendu a backendu | 8.89d | 2021-04-22 A | 2021-05-05 A | 15, 11 | 100% | 2021-04-21 | 2021-05-03 | 8.17d | 2021-04-21 | 2021-04-30 | Renata Tůmová | 71.12h | 71.12h | 24,180.8 | 22,222.4 | 24,180.8 |  |
| 17 | 1.1.5.2 | Vytvoření testovacího prostředí | 10.54d | 2021-05-05 A | 2021-05-20 A | 16 | 100% | 2021-05-03 | 2021-05-17 | 10d | 2021-05-03 | 2021-05-14 | Jiřina Černovská [50%]; Ludmila Machová; Ladislav Samek [20%] | 143.34h | 143.34h | 45,195.52 | 42,880 | 45,195.52 |  |
| 18 | 1.1.5.3 | Otestování aplikace v roli běžného uživatele | 4.29d | 2021-05-20 A | 2021-05-26 A | 17 | 100% | 2021-05-17 | 2021-05-21 | 4d | 2021-05-17 | 2021-05-19 | Ludmila Machová | 34.32h | 34.32h | 8,580 | 8,000 | 8,580 |  |
| 19 | 1.1.5.4 | Otestování administrátorské sekce v roli správce | 4d | 2021-05-20 A | 2021-05-26 A | 17 | 100% | 2021-05-17 | 2021-05-21 | 4d | 2021-05-17 | 2021-05-19 | Lucie Pelantová | 32h | 32h | 9,600 | 9,600 | 9,600 | V1.1.5;V1.1 |
| 20 | B | **Zprostředkování přístupů do portálů eIdentita a Datové schránky** | 23.05d | 2021-05-26 A | 2021-06-28 A |  | 100% | 2021-05-21 | 2021-06-22 | 21.51d | 2021-05-20 | 2021-06-17 | Duňa Líbalová | 425.84h | 425.84h | 174,152.8 | 158,554.4 | 174,152.8 |  |
| 21 | 2.1.1.1 | Zjištění podmínek pro získání přístupů do portálu eIdentita | 4.1d | 2021-05-26 A | 2021-06-01 A | 19 | 100% | 2021-05-21 | 2021-05-27 | 4d | 2021-05-20 | 2021-05-25 | Oldřich Jareš | 32.8h | 32.8h | 10,496 | 10,240 | 10,496 |  |
| 22 | 2.1.1.2 | Vypracování a zaslání žádosti Ministerstvu vnitra | 2d | 2021-06-11 A | 2021-06-15 A | 21FS+8d | 100% | 2021-06-08 | 2021-06-10 | 2d | 2021-06-07 | 2021-06-08 | Oldřich Jareš | 16h | 16h | 5,120 | 5,120 | 5,120 | V2.1.1 |
| 23 | 2.1.2.1 | Nastavení komunikace mezi aplikací a portálem eIdentita | 2.17d | 2021-06-15 A | 2021-06-17 A | 22 | 100% | 2021-06-10 | 2021-06-14 | 2.17d | 2021-06-09 | 2021-06-10 | Renata Tůmová | 17.36h | 17.36h | 5,902.4 | 5,902.4 | 5,902.4 |  |
| 24 | 2.1.2.2 | Nasazení skriptů pro autentizaci do backendu aplikace | 3.86d | 2021-06-17 A | 2021-06-23 A | 23 | 100% | 2021-06-14 | 2021-06-16 | 2.17d | 2021-06-11 | 2021-06-14 | Renata Tůmová | 30.88h | 30.88h | 10,499.2 | 5,902.4 | 10,499.2 |  |
| 25 | 2.1.2.3 | Otestování přihlášení | 2d | 2021-06-23 A | 2021-06-25 A | 24 | 100% | 2021-06-16 | 2021-06-18 | 2d | 2021-06-15 | 2021-06-16 | Ludmila Machová | 16h | 16h | 4,000 | 4,000 | 4,000 | V2.1.2;V2.1 |
| 26 | 2.2.1.1 | Zjištění podmínek pro získání přístupů do portálu Datové schránky | 4d | 2021-05-26 A | 2021-06-01 A | 19 | 100% | 2021-05-21 | 2021-05-27 | 4d | 2021-05-20 | 2021-05-25 | Oliver Křížka | 32h | 32h | 11,200 | 11,200 | 11,200 |  |
| 27 | 2.2.1.2 | Vypracování a zaslání žádosti Ministerstvu vnitra | 2.57d | 2021-06-10 A | 2021-06-14 A | 26FS+7d | 100% | 2021-06-07 | 2021-06-09 | 2.17d | 2021-06-04 | 2021-06-07 | Oliver Křížka | 20.56h | 20.56h | 7,196 | 6,076 | 7,196 | V2.2.1 |
| 28 | 2.2.2.1 | Nastavení komunikace mezi aplikací a portálem eIdentita | 2.48d | 2021-06-14 A | 2021-06-17 A | 27 | 100% | 2021-06-09 | 2021-06-11 | 2.17d | 2021-06-08 | 2021-06-09 | Věra Voplakalová | 19.84h | 19.84h | 7,539.2 | 6,596.8 | 7,539.2 |  |
| 29 | 2.2.2.2 | Nastavení identifikace Datové schránky na základě autentizovaného uživatele | 2.91d | 2021-06-17 A | 2021-06-22 A | 28 | 100% | 2021-06-11 | 2021-06-16 | 2.17d | 2021-06-10 | 2021-06-11 | Věra Voplakalová | 23.28h | 23.28h | 8,846.4 | 6,596.8 | 8,846.4 |  |
| 30 | 2.2.2.3 | Nasazení skriptů pro odeslání notifikací do backendu aplikace | 2.09d | 2021-06-22 A | 2021-06-24 A | 29 | 100% | 2021-06-16 | 2021-06-18 | 2d | 2021-06-14 | 2021-06-15 | Věra Voplakalová | 16.72h | 16.72h | 6,353.6 | 6,080 | 6,353.6 |  |
| 31 | 2.2.2.4 | Otestování notifikačního odesílání | 2d | 2021-06-24 A | 2021-06-28 A | 30 | 100% | 2021-06-18 | 2021-06-22 | 2d | 2021-06-16 | 2021-06-17 | Lucie Pelantová | 16h | 16h | 4,800 | 4,800 | 4,800 | V2.2.2;V2.2 |

| ID | WBS | Task | Duration | Start | Finish | Predecessors | Complete | Remaining | Baseline start | Baseline finish | Baseline duration | Baseline 1 start | Baseline 1 finish | Total slack | Free slack | Constraint | Resources | Work | Actual work | Cost | Baseline cost | Actual cost | Výstup (číslo) |
| --- | --- | --- | --- | --- | --- | --- | --- | --- | --- | --- | --- | --- | --- | --- | --- | --- | --- | --- | --- | --- | --- | --- | --- |
| 32 | C | **Získání informací o povinnostech občanů vůči finančnímu úřadu** | 87.13d | 2021-06-28 A | 2021-10-27 |  | 2% | 85.72d | 2021-06-22 | 2021-10-15 | 83.51d | 2021-06-18 | 2021-10-07 | 0d |  |  | Eliška Schaumannová [50%] | 1914.48h | 20.32h | 858,429.6 | 979,227.2 | 6,502.4 |  |
| 33 | 3.1.2.1 | Vypracování a zaslání žádosti Ministerstvu financí o komunikační přístup do interních systémů finanční správy | 5.54d | 2021-06-28 A | 2021-07-05 | 31, 25 | 46% | 3d | 2021-06-22 | 2021-06-29 | 5.17d | 2021-06-18 | 2021-06-24 | 0d |  |  | Oldřich Jareš | 44.32h | 20.32h | 14,182.4 | 13,235.2 | 6,502.4 |  |
| 34 | 3.1.2.2 | Propojení s interním systémem finanční správy | 6.17d | 2021-07-14 | 2021-07-22 | 33FS+5d |  |  | 2021-07-06 | 2021-07-14 | 6.17d | 2021-07-02 | 2021-07-09 | 5.75d | 0d | start no earlier than 2021-07-14 | Karel Kostelenec [50%]; Renata Tůmová | 74.04h |  | 26,654.4 | 26,654.4 |  | V3.1.2 |
| 35 | 3.1.1.1 | Analýza interních systémů finanční správy pro automatizovaný sběr informací | 35d | 2021-07-22 | 2021-09-09 | 34 |  |  | 2021-07-14 | 2021-09-01 | 35d | 2021-07-12 | 2021-08-27 | 5.75d | 0d |  | Vladimír Psohlavec; Daniel Prodělal | 560h |  | 252,000 | 218,400 |  |  |
| 36 | 3.1.1.2 | Vypracování reportu informací, které lze získávat automatizovaně | 5.17d | 2021-09-09 | 2021-09-16 | 35 |  |  | 2021-09-01 | 2021-09-08 | 5.17d | 2021-08-30 | 2021-09-03 | 5.75d | 0d |  | Zbyněk Křivák; Daniel Prodělal | 82.72h |  | 32,260.8 | 32,260.8 |  | V3.1.1 |
| 37 | 3.1.3.1 | Vytvoření skriptů pro získání informací | 9.5d | 2021-09-16 | 2021-09-29 | 36 |  |  | 2021-09-08 | 2021-09-22 | 9.5d | 2021-09-06 | 2021-09-17 | 5.75d | 0d |  | David Klesl [50%]; Josef Křupala [50%] | 76h |  | 30,400 | 25,840 |  |  |
| 38 | 3.1.3.2 | Otestování automatického sběru informací | 5d | 2021-09-29 | 2021-10-06 | 37 |  |  | 2021-09-22 | 2021-09-29 | 5d | 2021-09-20 | 2021-09-24 | 5.75d | 0d |  | Ludmila Machová | 40h |  | 10,000 | 10,000 |  | V3.1.3 |
| 39 | 3.1.4.1 | Vložení skriptů do backendu aplikace | 3.17d | 2021-10-06 | 2021-10-12 | 38 |  |  | 2021-09-29 | 2021-10-04 | 3.17d | 2021-09-27 | 2021-09-29 | 5.75d | 0d |  | Karel Kostelenec [50%]; David Klesl [50%] | 25.36h |  | 10,144 | 8,622.4 |  |  |
| 40 | 3.1.4.2 | Vytvoření skriptu pro pravidelné spouštění automatizovaného sběru informací | 5.83d | 2021-10-12 | 2021-10-19 | 39 |  |  | 2021-10-04 | 2021-10-12 | 5.83d | 2021-09-30 | 2021-10-07 | 5.75d |  |  | Karel Kostelenec [50%]; David Klesl [50%] | 46.64h |  | 18,656 | 15,857.6 |  | V3.1.4;V3.1 |
| 41 | 3.2.1.1 | Analýza interních systémů finanční správy pro manuální sběr informací | 20d | 2021-07-06 | 2021-08-02 | 33 |  |  | 2021-06-29 | 2021-07-27 | 20d | 2021-06-18 | 2021-07-15 | 0d |  |  | Alena Radová | 160h |  | 80,000 | 80,000 |  |  |
| 42 | 3.2.1.2 | Vypracování reportu informací, které lze získat manuálně | 10d | 2021-08-03 | 2021-08-16 | 41 |  |  | 2021-07-27 | 2021-08-10 | 10d | 2021-07-16 | 2021-07-29 | 0d |  |  | Alena Radová | 80h |  | 40,000 | 40,000 |  | V3.2.1 |
| 43 | 3.2.2.1 | Kontaktování finanční správy ohledně výběru pracovníků | 20d | 2021-08-17 | 2021-09-13 | 42 |  |  | 2021-08-10 | 2021-09-07 | 20d | 2021-07-30 | 2021-08-26 | 0d |  |  | Alena Radová | 160h |  | 80,000 | 80,000 |  |  |
| 44 | 3.2.2.2 | Vypracování seznamu pracovníků pro zadávání informací do systému | 5.17d | 2021-09-14 | 2021-09-21 | 43 |  |  | 2021-09-07 | 2021-09-14 | 5.17d | 2021-08-27 | 2021-09-02 | 0d |  |  | Alena Radová | 41.36h |  | 20,680 | 20,680 |  | V3.2.2 |
| 45 | 3.2.3.1 | Vytvoření administrátorských účtů | 4.09d | 2021-09-21 | 2021-09-27 | 44 |  |  | 2021-09-14 | 2021-09-16 | 2d | 2021-09-03 | 2021-09-06 | 0d |  |  | Karel Kostelenec [50%] | 16.36h |  | 6,544 | 6,080 |  |  |
| 46 | 3.2.3.2 | Přidělení práv administrativních pracovníků | 2.33d | 2021-09-27 | 2021-09-29 | 45 |  |  | 2021-09-16 | 2021-09-17 | 1.17d | 2021-09-07 | 2021-09-07 | 0d |  |  | Karel Kostelenec [50%] | 9.32h |  | 3,728 | 3,556.8 |  | V3.2.3 |
| 47 | 3.2.4.1 | Zjištění kroků pro manuální zaznamenávání informací o povinnostech | 10d | 2021-09-29 | 2021-10-13 | 46 |  |  | 2021-09-17 | 2021-10-01 | 10d | 2021-09-08 | 2021-09-21 | 0d |  |  | Daniel Prodělal | 80h |  | 32,000 | 32,000 |  |  |
| 48 | 3.2.4.2 | Sepsání návodu k zadávání informací pro administrativní pracovníky | 10d | 2021-10-13 | 2021-10-27 | 47 |  |  | 2021-10-01 | 2021-10-15 | 10d | 2021-09-22 | 2021-10-05 | 0d |  |  | Pavla Šopíková | 80h |  | 32,000 | 32,000 |  | V3.2.4;V3.2 |
| 49 | D | **Nasazení aplikace do produkčního prostředí** | 29.51d | 2021-10-27 | 2021-12-08 |  |  |  | 2021-10-15 | 2021-11-26 | 29.51d | 2021-10-08 | 2021-11-17 | 0d |  |  | Eliška Schaumannová [50%] | 354.12h |  | 134,565.6 | 193,585.6 |  |  |
| 50 | 1.2.1.1 | Výběr domény | 3.17d | 2021-10-27 | 2021-11-01 | 40, 48 |  |  | 2021-10-15 | 2021-10-20 | 3.17d | 2021-10-08 | 2021-10-12 | 0d |  |  | Oldřich Jareš | 25.36h |  | 8,115.2 | 8,115.2 |  |  |
| 51 | 1.2.1.2 | Registrace a zakoupení domény | 1.17d | 2021-11-01 | 2021-11-02 | 50 |  |  | 2021-10-20 | 2021-10-21 | 1.17d | 2021-10-13 | 2021-10-13 | 0d |  |  | Oldřich Jareš | 9.36h |  | 2,995.2 | 2,995.2 |  | V1.2.1 |
| 52 | 1.2.2.1 | Výběr typu hostingu aplikace | 2d | 2021-11-02 | 2021-11-04 | 51 |  |  | 2021-10-21 | 2021-10-25 | 2d | 2021-10-14 | 2021-10-15 | 0d |  |  | Oldřich Jareš | 16h |  | 5,120 | 5,120 |  |  |
| 53 | 1.2.2.2 | Příprava prostředí pro všechny potřebné komponenty aplikace | 14.83d | 2021-11-04 | 2021-11-25 | 52 |  |  | 2021-10-25 | 2021-11-15 | 14.83d | 2021-10-18 | 2021-11-05 | 0d |  |  | Oldřich Jareš | 118.64h |  | 37,964.8 | 37,964.8 |  | V1.2.2 |
| 54 | 1.2.3.1 | Přesunutí aplikace z testovacího na produkční prostředí | 5.17d | 2021-11-25 | 2021-12-02 | 53 |  |  | 2021-11-15 | 2021-11-22 | 5.17d | 2021-11-08 | 2021-11-12 | 0d |  |  | Oldřich Jareš | 41.36h |  | 13,235.2 | 13,235.2 |  |  |
| 55 | 1.2.3.2 | Otestování aplikace v produkčním prostředí čili kontrola, zda migrace proběhla v pořádku | 3.17d | 2021-12-02 | 2021-12-08 | 54 |  |  | 2021-11-22 | 2021-11-26 | 3.17d | 2021-11-15 | 2021-11-17 | 0d |  |  | Oldřich Jareš | 25.36h |  | 8,115.2 | 8,115.2 |  | V1.2.3;V1.2 |
| 56 | 5 | Projektový nárazník | 17.71d | 2021-12-08 | 2021-12-31 | 55 |  |  |  |  |  |  |  | 0d |  |  |  | 342.9h |  | 150,456.01 |  |  |  |
